# Project Plan

Schedule from MS Project, 2023-03-08 to 2023-06-16, costs in £, A marks actual dates.

## Calendars

- Standard: Mon-Fri 08:00-12:00, 13:00-17:00; Sat-Sun off.

## Resources

| Resource | Group | Unit | Rate | Cost per use |
| --- | --- | --- | --- | --- |
| Microsoft Windows 10 computer | All | Operating System |  |  |
| Unity Hub | Implementation | Software |  |  |
| Unity | Implementation | Software |  |  |
| Audacity | Design | Software |  |  |
| Microsoft word | Design | Software |  |  |
| Microsoft Project | Planning | Software |  |  |
| Github Desktop | All | Version control |  |  |
| Google Chrome | All | Web Browser |  |  |
| Studio Microphone | Asset creation | Hardware |  |  |
| Jaye Bell | Total work | Personnel | 69.81 | 8502.36 |
| Total estimated personnel cost | Cost | Personnel |  |  |
| Testers | Testing |  |  |  |

## Schedule

| ID | WBS | Task | Type | Duration | Start | Finish | Predecessors | Complete | Remaining | Actual start | Total slack | Free slack | Constraint | Resources | Work | Actual work | Cost | Actual cost |
| --- | --- | --- | --- | --- | --- | --- | --- | --- | --- | --- | --- | --- | --- | --- | --- | --- | --- | --- |
| 1 | 1 | **Planning Stage** |  | 5d | 2023-03-08 A | 2023-03-14 A |  | 100% |  |  |  |  |  |  | 24h | 24h | 27,182.52 | 27,182.52 |
| 2 | 1.1 | Write project proposal |  | 1d | 2023-03-08 A | 2023-03-08 A |  | 100% |  |  |  |  |  | Google Chrome [1 Web Browser]; Jaye Bell [1 Personnel]; Microsoft Windows 10 computer [1 Operating System]; Microsoft word [1 Software] | 8h | 8h | 9,060.84 | 9,060.84 |
| 3 | 1.2 | Write project requirements |  | 1d | 2023-03-09 A | 2023-03-09 A | 2 | 100% |  |  |  |  |  | Google Chrome [1 Web Browser]; Jaye Bell [1 Personnel]; Microsoft Windows 10 computer [1 Operating System]; Microsoft word [1 Software] | 8h | 8h | 9,060.84 | 9,060.84 |
| 4 | 1.3 | Write project plan |  | 1d | 2023-03-10 A | 2023-03-10 A | 3 | 100% |  |  |  |  |  | Google Chrome [1 Web Browser]; Jaye Bell [1 Personnel]; Microsoft Project [1 Software]; Microsoft Windows 10 computer [1 Operating System] | 8h | 8h | 9,060.84 | 9,060.84 |
| 5 | 1.4 | **Milestones** |  | 0d | 2023-03-14 A | 2023-03-14 A |  | 100% |  |  |  |  |  |  |  |  |  |  |
| 6 | 1.4.1 | Submit project proposal | milestone | 0d | 2023-03-14 A | 2023-03-14 A |  | 100% |  |  |  |  |  |  |  |  |  |  |
| 7 | 1.4.2 | Submit project requirements | milestone | 0d | 2023-03-14 A | 2023-03-14 A |  | 100% |  |  |  |  |  |  |  |  |  |  |
| 8 | 1.4.3 | Submit project plan | milestone | 0d | 2023-03-14 A | 2023-03-14 A |  | 100% |  |  |  |  |  |  |  |  |  |  |
| 9 | 2 | **Development stage** |  | 57d? | 2023-03-15 A | 2023-06-01 | 1 | 17% | 47.04d? |  |  |  |  |  | 264h | 71.11h | 103,453.44 | 30,471.5 |
| 10 | 2.1 | **Design portion** |  | 13d | 2023-03-15 A | 2023-03-31 A |  | 100% |  |  |  |  |  |  | 8h | 8h | 17,563.2 | 17,563.2 |
| 11 | 2.1.1 | Write up GDD |  | 0.5d | 2023-03-15 A | 2023-03-15 A |  | 100% |  |  |  |  |  | Google Chrome [1 Web Browser]; Jaye Bell [1 Personnel]; Microsoft Windows 10 computer [1 Operating System]; Microsoft word [1 Software] | 4h | 4h | 8,781.6 | 8,781.6 |
| 12 | 2.1.2 | Write up testing plan |  | 0.5d | 2023-03-15 A | 2023-03-15 A | 11 | 100% |  |  |  |  |  | Google Chrome [1 Web Browser]; Jaye Bell [1 Personnel]; Microsoft Windows 10 computer [1 Operating System]; Microsoft word [1 Software] | 4h | 4h | 8,781.6 | 8,781.6 |
| 13 | 2.1.3 | **Milestones** |  | 0d | 2023-03-31 A | 2023-03-31 A |  | 100% |  |  |  |  |  |  |  |  |  |  |
| 14 | 2.1.3.1 | Submit GDD | milestone | 0d | 2023-03-31 A | 2023-03-31 A |  | 100% |  |  |  |  | finish no earlier than 2023-03-31 |  |  |  |  |  |
| 15 | 2.1.3.2 | Submit testing plan | milestone | 0d | 2023-03-31 A | 2023-03-31 A | 14 | 100% |  |  |  |  | finish no earlier than 2023-03-31 |  |  |  |  |  |
| 16 | 2.2 | **Implementation portion** |  | 32d | 2023-04-19 | 2023-06-01 |  | 16% | 26.78d | 2023-04-20 |  |  |  |  | 256h | 63.11h | 85,890.24 | 12,908.3 |
| 17 | 2.2.1 | **Art** |  | 5d | 2023-04-27 | 2023-05-03 |  |  |  |  | -26d | 0d |  | Github Desktop [1 Version control]; Google Chrome [1 Web Browser]; Jaye Bell [1 Personnel]; Microsoft Windows 10 computer [1 Operating System] | 40h |  | 11,294.76 |  |
| 18 | 2.2.1.1 | Player art |  | 1d | 2023-04-27 | 2023-04-27 |  |  |  |  | -26d | 0d | start no earlier than 2023-04-27 |  |  |  |  |  |
| 19 | 2.2.1.2 | Background art |  | 1d | 2023-04-28 | 2023-04-28 | 18 |  |  |  | -26d | 0d |  |  |  |  |  |  |
| 20 | 2.2.1.3 | Geometry art |  | 1d | 2023-05-01 | 2023-05-01 | 19 |  |  |  | -26d | 0d |  |  |  |  |  |  |
| 21 | 2.2.1.4 | Obstacle art |  | 1d | 2023-05-02 | 2023-05-02 | 20 |  |  |  | -26d | 0d |  |  |  |  |  |  |
| 22 | 2.2.1.5 | UI art |  | 1d | 2023-05-03 | 2023-05-03 | 21 |  |  |  | -26d | 0d |  |  |  |  |  |  |
| 23 | 2.2.1.6 | Upload all art to version control | milestone | 0d | 2023-05-03 | 2023-05-03 | 22 |  |  |  | -26d | 0d |  |  |  |  |  |  |
| 24 | 2.2.2 | **Animation** |  | 4.5d | 2023-05-04 | 2023-05-10 | 17 |  |  |  | -26d | 0d |  | Github Desktop [1 Version control]; Google Chrome [1 Web Browser]; Jaye Bell [1 Personnel]; Microsoft Windows 10 computer [1 Operating System] | 36h |  | 11,015.52 |  |
| 25 | 2.2.2.1 | Player animation |  | 0.5d | 2023-05-04 | 2023-05-04 |  |  |  |  | -26d | 0d |  |  |  |  |  |  |
| 26 | 2.2.2.2 | Background animation |  | 1d | 2023-05-04 | 2023-05-05 | 25 |  |  |  | -26d | 0d |  |  |  |  |  |  |
| 27 | 2.2.2.3 | Geometry animation |  | 1d | 2023-05-05 | 2023-05-08 | 26 |  |  |  | -26d | 0d |  |  |  |  |  |  |
| 28 | 2.2.2.4 | Obstacle animation |  | 1d | 2023-05-08 | 2023-05-09 | 27 |  |  |  | -26d | 0d |  |  |  |  |  |  |
| 29 | 2.2.2.5 | UI animation |  | 1d | 2023-05-09 | 2023-05-10 | 28 |  |  |  | -26d | 0d |  |  |  |  |  |  |
| 30 | 2.2.2.6 | Upload all animation to version control | milestone | 0d | 2023-05-10 | 2023-05-10 | 29 |  |  |  | -26d | 0d |  |  |  |  |  |  |

| ID | WBS | Task | Type | Duration | Start | Finish | Predecessors | Complete | Remaining | Actual start | Total slack | Free slack | Constraint | Resources | Work | Actual work | Cost | Actual cost |
| --- | --- | --- | --- | --- | --- | --- | --- | --- | --- | --- | --- | --- | --- | --- | --- | --- | --- | --- |
| 31 | 2.2.3 | **Music** |  | 0.5d | 2023-05-10 | 2023-05-10 | 24 |  |  |  | -26d | 0d |  | Audacity [1 Software]; Github Desktop [1 Version control]; Google Chrome [1 Web Browser]; Jaye Bell [1 Personnel]; Microsoft Windows 10 computer [1 Operating System]; Studio Microphone [1 Hardware] | 4h |  | 8,781.6 |  |
| 32 | 2.2.3.1 | Base theme |  | 0.5d | 2023-05-10 | 2023-05-10 |  |  |  |  | -26d | 0d |  |  |  |  |  |  |
| 33 | 2.2.3.2 | Upload all music to version control | milestone | 0d | 2023-05-10 | 2023-05-10 |  |  |  |  | -25.5d | 0d |  |  |  |  |  |  |
| 34 | 2.2.4 | **Sound** |  | 4d | 2023-05-11 | 2023-05-16 | 31 |  |  |  | -26d | 0d |  | Audacity [1 Software]; Github Desktop [1 Version control]; Google Chrome [1 Web Browser]; Jaye Bell [1 Personnel]; Studio Microphone [1 Hardware]; Microsoft Windows 10 computer [1 Operating System] | 32h |  | 10,736.28 |  |
| 35 | 2.2.4.1 | Player sounds |  | 1d | 2023-05-11 | 2023-05-11 |  |  |  |  | -26d | 0d |  |  |  |  |  |  |
| 36 | 2.2.4.2 | Background sounds |  | 1d | 2023-05-12 | 2023-05-12 | 35 |  |  |  | -26d | 0d |  |  |  |  |  |  |
| 37 | 2.2.4.3 | Obstacle sounds |  | 1d | 2023-05-15 | 2023-05-15 | 36 |  |  |  | -26d | 0d |  |  |  |  |  |  |
| 38 | 2.2.4.4 | UI sounds |  | 1d | 2023-05-16 | 2023-05-16 | 37 |  |  |  | -26d | 0d |  |  |  |  |  |  |
| 39 | 2.2.4.5 | Upload all sounds to version control | milestone | 0d | 2023-05-16 | 2023-05-16 | 38 |  |  |  | -26d | 0d |  |  |  |  |  |  |
| 40 | 2.2.5 | **Level Building** |  | 2d | 2023-05-17 | 2023-05-18 | 34 |  |  |  | -26d | 0d |  | Github Desktop [1 Version control]; Google Chrome [1 Web Browser]; Jaye Bell [1 Personnel]; Microsoft Windows 10 computer [1 Operating System]; Unity [1 Software]; Unity Hub [1 Software] | 16h |  | 9,619.32 |  |
| 41 | 2.2.5.1 | Create the level layouts in the engine |  | 1d | 2023-05-17 | 2023-05-17 |  |  |  |  | -26d | 0d |  |  |  |  |  |  |
| 42 | 2.2.5.2 | Edit the level layouts with new information |  | 1d | 2023-05-18 | 2023-05-18 | 41 |  |  |  | -26d | 0d |  |  |  |  |  |  |
| 43 | 2.2.5.3 | Upload all level changes to version control | milestone | 0d | 2023-05-18 | 2023-05-18 | 42 |  |  |  | -26d | 0d |  |  |  |  |  |  |
| 44 | 2.2.6 | **Coding** |  | 31d | 2023-04-20 A | 2023-06-01 | 40 | 21% | 24.38d |  |  |  |  | Google Chrome [1 Web Browser]; Microsoft Windows 10 computer [1 Operating System]; Unity [1 Software]; Unity Hub [1 Software]; Github Desktop [1 Version control]; Jaye Bell [1 Personnel] | 128h | 63.11h | 17,438.04 | 12,908.3 |
| 45 | 2.2.6.1 | **Player** |  | 5d | 2023-04-20 A | 2023-04-26 A |  | 100% |  |  |  |  |  |  |  |  |  |  |
| 46 | 2.2.6.1.1 | Movement | milestone | 0d | 2023-04-20 A | 2023-04-20 A |  | 100% |  |  |  |  |  |  |  |  |  |  |
| 47 | 2.2.6.1.2 | Jumping |  | 5d | 2023-04-20 A | 2023-04-26 A |  | 100% |  |  |  |  |  |  |  |  |  |  |
| 48 | 2.2.6.2 | **Background** |  | 5d | 2023-04-27 | 2023-05-03 | 45 |  |  |  | -10d | 0d |  |  |  |  |  |  |
| 49 | 2.2.6.2.1 | Interact with level |  | 5d | 2023-04-27 | 2023-05-03 |  |  |  |  | -10d | 0d |  |  |  |  |  |  |
| 50 | 2.2.6.3 | **Obstacles** |  | 5d | 2023-05-03 | 2023-05-09 | 48 | 68% | 1.62d | 2023-04-20 |  |  |  |  |  |  |  |  |
| 51 | 2.2.6.3.1 | Interact with level geometry |  | 5d | 2023-05-03 A | 2023-05-09 |  | 35% | 3.25d |  | 28d |  | finish no earlier than 2023-05-09 |  |  |  |  |  |
| 52 | 2.2.6.3.2 | Interact with player objects |  | 5d | 2023-04-20 A | 2023-04-26 A |  | 100% |  |  |  |  |  |  |  |  |  |  |
| 53 | 2.2.6.4 | **UI** |  | 7d | 2023-05-10 | 2023-05-18 | 50 |  |  |  | 2d | 0d |  |  |  |  |  |  |
| 54 | 2.2.6.4.1 | Update current height |  | 7d | 2023-05-10 | 2023-05-18 |  |  |  |  | 2d |  |  |  |  |  |  |  |
| 55 | 2.2.6.4.2 | Display height |  | 7d | 2023-05-10 | 2023-05-18 |  |  |  |  | 2d |  |  |  |  |  |  |  |
| 56 | 2.2.6.4.3 | Display lives |  | 7d | 2023-05-10 | 2023-05-18 |  |  |  |  | 2d |  |  |  |  |  |  |  |
| 57 | 2.2.6.4.4 | Display current upgrades |  | 7d | 2023-05-10 | 2023-05-18 |  |  |  |  | 2d |  |  |  |  |  |  |  |

| ID | WBS | Task | Type | Duration | Start | Finish | Predecessors | Total slack | Free slack | Constraint | Resources | Work | Cost |
| --- | --- | --- | --- | --- | --- | --- | --- | --- | --- | --- | --- | --- | --- |
| 58 | 2.2.6.5 | **Mechanics** |  | 7d | 2023-05-19 | 2023-05-29 | 53 | 2d |  |  |  |  |  |
| 59 | 2.2.6.5.1 | Upgrade application |  | 7d | 2023-05-19 | 2023-05-29 |  | 2d |  |  |  |  |  |
| 60 | 2.2.6.6 | **Milestones** |  | 0d | 2023-06-01 | 2023-06-01 | 58 | 0d |  |  |  |  |  |
| 61 | 2.2.6.6.1 | Upload all code to version control | milestone, manual | 0d | 2023-06-01 | 2023-06-01 |  |  |  |  |  |  |  |
| 62 | 2.2.7 | **Testing** |  | 0d | 2023-06-01 | 2023-06-01 | 44 |  |  |  | Github Desktop; Google Chrome; Jaye Bell [1 Personnel]; Microsoft Windows 10 computer; Testers |  | 8,502.36 |
| 63 | 2.2.7.1 | Test game based on plan |  | 1d | 2023-06-01 | 2023-06-01 |  | 10d | 0d | finish no earlier than 2023-06-01 |  |  |  |
| 64 | 2.2.7.2 | Record test results | milestone | 0d | 2023-06-01 | 2023-06-01 | 63 | 10d |  |  |  |  |  |
| 65 | 2.2.8 | **Ending Milestones** |  | 0d | 2023-06-01 | 2023-06-01 | 62 | 10d |  |  | Github Desktop; Google Chrome; Jaye Bell [1 Personnel]; Microsoft Windows 10 computer; Total estimated personnel cost |  | 8,502.36 |
| 66 | 2.2.8.1 | Submit Game | milestone | 0d | 2023-06-01 | 2023-06-01 |  | 11d |  |  |  |  |  |
| 67 | 2.2.8.2 | Submit testing results | milestone | 0d | 2023-06-01 | 2023-06-01 |  | 11d |  |  |  |  |  |
| 68 | 3 | **Evaluation stage** |  | 11d | 2023-06-02 | 2023-06-16 | 9 | 0d |  |  |  | 8h | 9,060.84 |
| 69 | 3.1 | Write up evaluation document |  | 1d | 2023-06-02 | 2023-06-02 |  | 10d |  |  | Google Chrome [1 Web Browser]; Jaye Bell [1 Personnel]; Microsoft Windows 10 computer [1 Operating System]; Microsoft word [1 Software] | 8h | 9,060.84 |
| 70 | 3.2 | **Milestones** |  | 0d | 2023-06-16 | 2023-06-16 |  | 0d |  |  |  |  |  |
| 71 | 3.2.1 | Submit evaluation document | milestone, manual | 0d | 2023-06-16 | 2023-06-16 | 69 |  |  |  |  |  |  |
